# caB2B_Year_2_Edit

Schedule from MS Project, 2007-08-06 to 2011-12-05, A marks actual dates.
PSPL

## Calendars

- Standard: Mon-Fri 08:00-12:00, 13:00-17:00; Sat-Sun off. Exceptions (off unless hours are given): 2007-08-15, 2007-08-28.

## Resources

| Resource |
| --- |
| chetan_patil |
| Rahul Ner |
| chandrakant_talele |
| srinath_k |
| deepak_shingan |
| atul_jawale |
| hrishikesh_rajpathak |

## Schedule

| ID | WBS | Task | Duration | Start | Finish | Predecessors | Complete | Remaining | Baseline start | Baseline finish | Baseline duration | Total slack | Free slack | Resources | Work | Actual work | Text1 |
| --- | --- | --- | --- | --- | --- | --- | --- | --- | --- | --- | --- | --- | --- | --- | --- | --- | --- |
| 1 | 1 | **caB2B Year 2** | 1128.67d? | 2007-08-06 A | 2011-12-05 |  | 6% | 1057.29d? | 2007-08-06 | 2013-01-02 | 1411d? | 0d |  |  | 4864h | 900.16h |  |
| 2 | 1.1 | **Mile Stone 1** | 53.67d | 2007-08-06 A | 2007-10-22 |  | 60% | 21.72d | 2007-08-06 | 2007-10-09 | 45d | 0d |  |  | 1288h | 876.16h | Aug-Sept |
| 3 | 1.1.1 | **Saved Query** | 47d | 2007-08-06 A | 2007-10-11 |  | 65% | 16.5d | 2007-08-06 | 2007-10-03 | 41d | 1.67d |  |  | 424h | 280.8h |  |
| 4 | 1.1.1.1 | query model changes | 5d | 2007-08-06 A | 2007-08-10 A |  | 100% |  | 2007-08-06 | 2007-08-10 | 5d |  |  | chetan_patil | 40h | 40h |  |
| 5 | 1.1.1.2 | specifying hibernate mappings, schema generation | 10d | 2007-08-13 A | 2007-08-29 A | 4 | 100% |  | 2007-08-13 | 2007-08-27 | 9d |  |  | chetan_patil | 88h | 88h |  |
| 6 | 1.1.1.3 | UI changes to integrate and testing | 3d | 2007-08-28 A | 2007-08-31 A | 5 | 100% |  | 2007-08-28 | 2007-08-29 | 1d |  |  | chetan_patil | 32h | 32h |  |
| 7 | 1.1.1.4 | Regenrate UI (DAG etc) from saved query | 10d | 2007-09-28 | 2007-10-11 | 6, 13 |  |  | 2007-08-30 | 2007-09-12 | 10d | 1.67d |  | deepak_shingan | 80h |  |  |
| 8 | 1.1.1.5 | **Parametrized query** | 41d | 2007-08-06 A | 2007-10-03 |  | 66% | 14.08d | 2007-08-06 | 2007-10-03 | 41d | 7.67d |  |  | 184h | 120.8h |  |
| 9 | 1.1.1.5.1 | develop wireframes | 2d | 2007-08-06 A | 2007-08-07 A |  | 100% |  | 2007-08-06 | 2007-08-07 | 2d |  |  | Rahul Ner [50%] | 16h | 16h |  |
| 10 | 1.1.1.5.2 | query model changes | 5d | 2007-08-30 A | 2007-09-05 A | 9 | 100% |  | 2007-08-30 | 2007-09-05 | 5d |  |  | chetan_patil | 40h | 40h |  |
| 11 | 1.1.1.5.3 | specifying hibernate mappings, schema generation | 3d | 2007-09-06 A | 2007-09-10 A | 10 | 100% |  | 2007-09-06 | 2007-09-10 | 3d |  |  | chetan_patil | 24h | 24h |  |
| 12 | 1.1.1.5.4 | develop screen to define parameterized query | 6d | 2007-09-17 A | 2007-09-24 | 11 | 75% | 1.5d | 2007-09-17 | 2007-09-24 | 6d | 2.27d | 0d | deepak_shingan | 48h | 36h |  |
| 13 | 1.1.1.5.5 | develop screen to execute parameterized query | 3d | 2007-09-25 A | 2007-09-27 | 12 | 20% | 2.4d | 2007-09-25 | 2007-09-27 | 3d | 1.67d | 0d | deepak_shingan | 24h | 4.8h |  |
| 14 | 1.1.1.5.6 | UI changes to integrate and testing | 4d | 2007-09-28 | 2007-10-03 | 13 |  |  | 2007-09-28 | 2007-10-03 | 4d | 7.67d | 0d | chetan_patil | 32h |  |  |
| 15 | 1.1.2 | **Create custom data categories** | 48.67d | 2007-08-06 A | 2007-10-15 |  | 61% | 19.18d | 2007-08-06 | 2007-10-08 | 43.4d | 0d |  |  | 400h | 269.92h |  |
| 16 | 1.1.2.1 | **In experiment context** | 28d | 2007-08-06 A | 2007-09-14 A |  | 100% |  | 2007-08-06 | 2007-09-14 | 28d |  |  |  | 232h | 232h |  |
| 17 | 1.1.2.1.1 | develop wireframes | 1d | 2007-08-06 A | 2007-08-06 A |  | 100% |  | 2007-08-06 | 2007-08-06 | 1d |  |  | hrishikesh_rajpathak | 8h | 8h |  |
| 18 | 1.1.2.1.2 | deveople screen to create CDC | 7d | 2007-08-07 A | 2007-08-16 A | 17 | 100% |  | 2007-08-07 | 2007-08-16 | 7d |  |  | hrishikesh_rajpathak | 56h | 56h |  |
| 19 | 1.1.2.1.3 | design CDC backend | 7d | 2007-08-17 A | 2007-08-27 A | 18 | 100% |  | 2007-08-17 | 2007-08-27 | 7d |  |  | hrishikesh_rajpathak | 56h | 56h |  |
| 20 | 1.1.2.1.4 | saving CDC | 4d | 2007-08-28 A | 2007-09-03 A | 19 | 100% |  | 2007-08-28 | 2007-09-03 | 4d |  |  | hrishikesh_rajpathak | 40h | 40h |  |
| 21 | 1.1.2.1.5 | populating and fetching data for CDC | 8d | 2007-09-04 A | 2007-09-14 A | 20 | 100% |  | 2007-09-04 | 2007-09-14 | 8d |  |  | hrishikesh_rajpathak | 72h | 72h |  |
| 22 | 1.1.2.2 | **By Admin** | 20.67d | 2007-09-17 A | 2007-10-15 | 16 | 21% | 16.36d | 2007-09-17 | 2007-10-08 | 15.4d | 0d |  |  | 168h | 37.92h |  |
| 23 | 1.1.2.2.1 | develop wireframes | 1.5d | 2007-09-17 A | 2007-09-18 A |  | 100% |  | 2007-09-17 | 2007-09-17 | 1d |  |  | Rahul Ner | 8h | 8h |  |
| 24 | 1.1.2.2.2 | deveople screen to create CDC | 5d | 2007-09-17 A | 2007-09-21 |  | 60% | 2d | 2007-09-17 | 2007-09-21 | 5d | 15.67d | 0d | hrishikesh_rajpathak | 40h | 24h |  |
| 25 | 1.1.2.2.3 | design backend | 3.6d | 2007-09-17 A | 2007-09-20 |  | 30% | 2.52d | 2007-09-17 | 2007-09-19 | 2d | 0d |  | srinath_k | 16h | 5.92h |  |
| 26 | 1.1.2.2.4 | coding for backend | 12d | 2007-09-21 | 2007-10-08 | 25 |  |  | 2007-09-19 | 2007-09-27 | 6d | 0d |  | srinath_k [50%] | 48h |  |  |
| 27 | 1.1.2.2.5 | finding matching CDC while opeing experiment | 4.67d | 2007-10-09 | 2007-10-15 | 26 |  |  | 2007-09-27 | 2007-10-08 | 7d | 0d |  | atul_jawale; srinath_k [50%] | 56h |  |  |

Notes:
- 8: This is User friendly Search for experiment data / Define category along with result view. Using this, user should be able to just define limit and get results. No need to worry about DAG, paths and no need to select the result view. / Refer to caTissue for requirments and screens. / Special Case : Category Query for a one-many attribute / (Queries like Participant with PMI = 1 and 2)
- 15: Show datalist, select subtree from data list as spreadsheet

| ID | WBS | Task | Duration | Start | Finish | Predecessors | Complete | Remaining | Baseline start | Baseline finish | Baseline duration | Total slack | Free slack | Constraint | Resources | Work | Actual work | Text1 |
| --- | --- | --- | --- | --- | --- | --- | --- | --- | --- | --- | --- | --- | --- | --- | --- | --- | --- | --- |
| 28 | 1.1.3 | **New viewers (metadata based)** | 42d | 2007-08-06 A | 2007-10-04 |  | 48% | 21.7d | 2007-08-06 | 2007-09-17 | 29d | 6.67d |  |  |  | 256h | 146.24h |  |
| 29 | 1.1.3.1 | design for generic viewer | 13.3d | 2007-08-06 A | 2007-09-05 |  | 20% | 10.64d | 2007-08-06 | 2007-08-14 | 7d | 6.75d | 0d |  | chandrakant_talele | 56h | 13.44h |  |
| 30 | 1.1.3.2 | **Heat Map viewer** | 35d | 2007-08-16 A | 2007-10-04 | 29 | 59% | 14.21d | 2007-08-16 | 2007-09-17 | 22d | 6.67d |  |  |  | 200h | 132.8h |  |
| 31 | 1.1.3.2.1 | find appropriate 3rd party library | 13d | 2007-08-16 A | 2007-09-05 A |  | 100% |  | 2007-08-16 | 2007-08-30 | 9d |  |  |  | deepak_shingan | 104h | 104h |  |
| 32 | 1.1.3.2.2 | finalize operation to be done on heat map | 3d | 2007-09-06 | 2007-09-10 | 31 |  |  | 2007-08-31 | 2007-09-04 | 3d | 13.87d | 0d |  | deepak_shingan | 24h |  |  |
| 33 | 1.1.3.2.3 | implement heat map viewer | 18d | 2007-09-11 A | 2007-10-04 | 32 | 40% | 10.8d | 2007-09-05 | 2007-09-17 | 9d | 6.67d |  |  | chandrakant_talele [50%] | 72h | 28.8h |  |
| 34 | 1.1.4 | **Spreadsheet Component** | 41.5d | 2007-08-06 A | 2007-10-04 |  | 76% | 9.96d | 2007-08-06 | 2007-09-10 | 24d | 7.17d |  |  |  | 208h | 179.2h |  |
| 35 | 1.1.4.1 | Export | 2d | 2007-08-06 A | 2007-08-07 A |  | 100% |  | 2007-08-06 | 2007-08-07 | 2d |  |  |  | atul_jawale | 16h | 16h |  |
| 36 | 1.1.4.2 | Specify view for Custom data category | 3d | 2007-08-08 A | 2007-08-10 A | 35 | 100% |  | 2007-08-08 | 2007-08-10 | 3d |  |  |  | atul_jawale | 24h | 24h |  |
| 37 | 1.1.4.3 | Filters like spot fire | 10d | 2007-08-13 A | 2007-08-27 A | 36 | 100% |  | 2007-08-13 | 2007-08-27 | 10d |  |  |  | atul_jawale | 80h | 80h |  |
| 38 | 1.1.4.4 | Add New ,copy ,paste | 3d | 2007-08-28 A | 2007-09-03 A | 37 | 100% |  | 2007-08-28 | 2007-09-03 | 3d |  |  |  | atul_jawale | 40h | 40h |  |
| 39 | 1.1.4.5 | Integrating in cab2b | 12d | 2007-09-18 A | 2007-10-04 | 38, 23 | 40% | 7.2d | 2007-09-04 | 2007-09-10 | 5d | 7.17d |  | start no earlier than 2007-09-17 | Rahul Ner [50%] | 48h | 19.2h |  |
| 40 | 1.1.5 | QA cycle | 5d | 2007-10-15 | 2007-10-22 | 3, 15, 28, 34 |  |  |  |  |  | 0d |  |  |  |  |  |  |
| 41 | 1.2 | **Ongoing Features** | 28d | 2007-09-24 A | 2007-10-31 |  | 7% | 26.09d |  |  |  | 1067.67d |  |  |  | 352h | 24h |  |
| 42 | 1.2.1 | **Providing security credentials for the data services** | 24d | 2007-09-24 A | 2007-10-25 |  | 13% | 21d | 2007-08-06 | 2007-09-11 | 25d | 1071.67d |  |  |  | 192h | 24h |  |
| 43 | 1.2.1.1 | investigate grid security features | 15d | 2007-09-24 A | 2007-10-12 | 24 | 20% | 12d | 2007-08-06 | 2007-08-29 | 15d | 1071.67d | 0d | start no earlier than 2007-09-18 | hrishikesh_rajpathak | 120h | 24h |  |
| 44 | 1.2.1.2 | test with catissue | 9d | 2007-10-15 | 2007-10-25 | 43 |  |  | 2007-08-30 | 2007-09-11 | 9d | 1071.67d |  |  | hrishikesh_rajpathak | 72h |  |  |
| 45 | 1.2.2 | ICR | 20d | 2007-10-04 | 2007-10-31 | 14 |  |  | 2007-09-12 | 2007-10-09 | 20d | 10.67d | 0d |  | chetan_patil | 160h |  |  |
| 46 | 1.3 | **Mile Stone 2** | 44d | 2007-10-22 | 2007-12-21 | 2 |  |  | 2007-10-10 | 2008-08-05 | 215d | 0d |  |  |  | 1720h |  | Oct-Nov |
| 47 | 1.3.1 | **Analytical services for micro array data** | 21d | 2007-10-22 | 2007-11-20 |  |  |  | 2007-10-10 | 2007-11-07 | 21d | 23d |  |  |  | 168h |  |  |
| 48 | 1.3.1.1 | Investigate on AS metadata | 9d | 2007-10-22 | 2007-11-02 |  |  |  | 2007-10-10 | 2007-10-22 | 9d | 23d | 0d |  | hrishikesh_rajpathak | 72h |  |  |
| 49 | 1.3.1.2 | load input output model for service | 5d | 2007-11-02 | 2007-11-09 | 48 |  |  | 2007-10-23 | 2007-10-29 | 5d | 23d | 0d |  | hrishikesh_rajpathak | 40h |  |  |
| 50 | 1.3.1.3 | test the service | 7d | 2007-11-09 | 2007-11-20 | 49 |  |  | 2007-10-30 | 2007-11-07 | 7d | 23d |  |  | hrishikesh_rajpathak | 56h |  |  |
| 51 | 1.3.2 | **Define output view (3rd screen)** | 26d | 2007-11-01 | 2007-12-06 |  |  |  | 2007-11-08 | 2007-12-13 | 26d | 10.67d |  |  |  | 208h |  |  |
| 52 | 1.3.2.1 | develop wireframes | 1d | 2007-11-01 | 2007-11-01 | 45 |  |  | 2007-11-08 | 2007-11-08 | 1d | 13d | 0d |  | chetan_patil | 8h |  |  |
| 53 | 1.3.2.2 | develop screen | 10d | 2007-11-02 | 2007-11-15 | 52 |  |  | 2007-11-09 | 2007-11-22 | 10d | 13d | 0d |  | chetan_patil | 80h |  |  |
| 54 | 1.3.2.3 | chages in query generation | 15d | 2007-11-16 | 2007-12-06 | 53 |  |  | 2007-11-23 | 2007-12-13 | 15d | 13d |  |  | chetan_patil | 120h |  |  |
| 55 | 1.3.3 | Convert 3D to 2D data | 44d | 2007-10-22 | 2007-12-21 |  |  |  | 2007-12-14 | 2008-01-14 | 22d | 0d |  |  | srinath_k [50%] | 176h |  |  |
| 56 | 1.3.4 | Creating and save categories | 30d | 2007-10-22 | 2007-12-03 |  |  |  | 2008-01-15 | 2008-02-04 | 15d | 14d |  |  | Rahul Ner [50%] | 120h |  |  |
| 57 | 1.3.5 | Automated down load of caDSR models | 44d | 2007-10-22 | 2007-12-21 |  |  |  | 2008-02-05 | 2008-03-05 | 22d | 0d |  |  | chandrakant_talele [50%] | 176h |  |  |
| 58 | 1.3.6 | Connecting two categories | 7d | 2007-10-22 | 2007-10-31 |  |  |  | 2008-03-06 | 2008-03-14 | 7d | 15d | 0d |  | deepak_shingan | 56h |  |  |
| 59 | 1.3.7 | New viewers (metadata based) | 22d | 2007-10-31 | 2007-11-30 | 58 |  |  | 2008-03-17 | 2008-04-15 | 22d | 15d |  |  | deepak_shingan | 176h |  |  |
| 60 | 1.3.8 | ICR | 40d | 2007-10-22 | 2007-12-17 |  |  |  | 2008-04-16 | 2008-08-05 | 80d | 4d |  |  | atul_jawale; hrishikesh_rajpathak | 640h |  |  |

Notes:
- 28: Annotation viewer (gene Inspector) embedded webpage - browser window (refer to FE) / Pathway browser / Literature network / heat map
- 34: Edit button (slide no 46) / copy (use clipboard) / paste (To newly added columns) / Add Column / Delete Column (Newly added columns only P2) / Always show Export/Filter options + formulas (P3) / count of distinct values
- 36: (Just a spreadsheet operations) + show all column , select the required columns
- 37: Filter on BioDataCube / count of distinct values
- 51: It copies the original DAG build using conditions and allows user to specify more classes needed as output. It is similar to tissue core. Admin won't define view for each category. It will be smartly determined by the application. User can mark a node as "Present in view" Or "Not present in view". We need to decide should user be able to delete his limits (nodes) while defining view
- 55: S-> molecular Event1 and 2 show then as spreadsheet with row as specimen1,2,3 and columns as ME1 col1, ME1 col2,ME2 col1, ME2 col2, This is only for one level in tree (association)
- 56: It it similar to parameterixed query, screen will be similar to add limit page / UE to change slide 72, it should be similar to parametrized query
- 57: Admin will be shown all avalible models using discovery. Then selected models will be loaded
- 58: DAG like view where two graphs are shown in DAG and they will be connected by pairing classes from one category to eac class in other category

| ID | WBS | Task | Duration | Start | Finish | Predecessors | Baseline start | Baseline finish | Baseline duration | Total slack | Resources | Work | Text1 |
| --- | --- | --- | --- | --- | --- | --- | --- | --- | --- | --- | --- | --- | --- |
| 61 | 1.4 | **Mile Stone 3** | 62d | 2007-12-21 | 2008-03-18 | 46 | 2008-08-06 | 2009-05-28 | 212d | 0d |  | 1504h | Dec-Jan |
| 62 | 1.4.1 | configuration of service/instance to query | 44d | 2007-12-21 | 2008-02-21 |  | 2008-08-06 | 2008-09-04 | 22d | 18d | chandrakant_talele [50%] | 176h |  |
| 63 | 1.4.2 | caArray category | 45d | 2007-12-21 | 2008-02-22 |  | 2008-09-05 | 2008-11-06 | 45d | 17d | deepak_shingan | 360h |  |
| 64 | 1.4.3 | Remove client jar dependency for Analytical services (AS) | 35d | 2007-12-21 | 2008-02-08 |  | 2008-11-07 | 2008-12-25 | 35d | 27d | chetan_patil | 280h |  |
| 65 | 1.4.4 | Ability to configure the applications used for metadata serach | 18d | 2007-12-21 | 2008-01-16 |  | 2008-12-26 | 2009-01-20 | 18d | 0d | Rahul Ner [50%] | 72h |  |
| 66 | 1.4.5 | Join data list (data category) | 30d | 2007-12-21 | 2008-02-01 |  | 2009-02-11 | 2009-03-03 | 15d | 32d | srinath_k [50%] | 120h |  |
| 67 | 1.4.6 | New viewers (metadata based) | 44d | 2008-01-16 | 2008-03-18 | 65 | 2009-03-04 | 2009-04-02 | 22d | 0d | Rahul Ner [50%] | 176h |  |
| 68 | 1.4.7 | ICR | 20d | 2007-12-21 | 2008-01-18 |  | 2009-04-03 | 2009-05-28 | 40d | 42d | hrishikesh_rajpathak; atul_jawale | 320h |  |
| 69 | 1.5 | **Mile Stone 4** | 252d | 2008-03-18 | 2009-03-05 | 61 | 2009-05-29 | 2010-04-05 | 222d | 0d |  |  | Feb-Mar |
| 70 | 1.5.1 | Relevance based searched | 35d | 2008-03-18 | 2008-05-06 |  | 2009-05-29 | 2009-07-16 | 35d | 0d |  |  |  |
| 71 | 1.5.2 | pre-defined filters on attributes | 30d | 2008-05-06 | 2008-06-17 | 70 | 2009-01-21 | 2009-02-10 | 15d | 0d |  |  |  |
| 72 | 1.5.3 | Return derived classes when searched for base class | 30d | 2008-06-17 | 2008-07-29 | 71 | 2009-07-17 | 2009-08-27 | 30d | 0d |  |  |  |
| 73 | 1.5.4 | Asynchronous execution of query | 45d | 2008-07-29 | 2008-09-30 | 72 | 2009-08-28 | 2009-10-29 | 45d | 0d |  |  |  |
| 74 | 1.5.5 | Authentication with our own IDP | 30d | 2008-09-30 | 2008-11-11 | 73 | 2009-10-30 | 2009-12-10 | 30d | 0d |  |  |  |
| 75 | 1.5.6 | Curating path | 30d | 2008-11-11 | 2008-12-23 | 74 | 2009-12-11 | 2010-01-21 | 30d | 0d |  |  |  |
| 76 | 1.5.7 | New viewers (metadata based) | 22d | 2008-12-23 | 2009-01-22 | 75 | 2010-01-22 | 2010-02-22 | 22d | 0d |  |  |  |
| 77 | 1.5.8 | Incorporate UE Review comments till date Part 1 | 20d | 2009-01-22 | 2009-02-19 | 76 | 2010-02-23 | 2010-03-22 | 20d | 0d |  |  |  |
| 78 | 1.5.9 | Define URLs for selected data for browser window viewer | 10d | 2009-02-19 | 2009-03-05 | 77 | 2010-03-23 | 2010-04-05 | 10d | 0d |  |  |  |
| 79 | 1.6 | **Mile Stone 5** | 365d | 2009-03-05 | 2010-07-29 | 69 | 2010-04-06 | 2011-08-29 | 365d | 0d |  |  | NA |
| 80 | 1.6.1 | View the existing data list | 22d | 2009-03-05 | 2009-04-06 |  | 2010-04-06 | 2010-05-05 | 22d | 0d |  |  |  |
| 81 | 1.6.2 | Paths between categories and class | 35d | 2009-04-06 | 2009-05-25 | 80 | 2010-05-06 | 2010-06-23 | 35d | 0d |  |  |  |
| 82 | 1.6.3 | Create Experiments from the multiple existing data list. | 10d | 2009-05-25 | 2009-06-08 | 81 | 2010-06-24 | 2010-07-07 | 10d | 0d |  |  |  |
| 83 | 1.6.4 | User friendly names for records | 15d | 2009-06-08 | 2009-06-29 | 82 | 2010-07-08 | 2010-07-28 | 15d | 0d |  |  |  |
| 84 | 1.6.5 | parenthesis in DAG | 35d | 2009-06-29 | 2009-08-17 | 83 | 2010-07-29 | 2010-09-15 | 35d | 0d |  |  |  |
| 85 | 1.6.6 | Popularity Paths, categories | 18d | 2009-08-17 | 2009-09-10 | 84 | 2010-09-16 | 2010-10-11 | 18d | 0d |  |  |  |
| 86 | 1.6.7 | Edit used path (overriding curated/selected paths) | 10d | 2009-09-10 | 2009-09-24 | 85 | 2010-10-12 | 2010-10-25 | 10d | 0d |  |  |  |
| 87 | 1.6.8 | Define Attribute view | 10d | 2009-09-24 | 2009-10-08 | 86 | 2010-10-26 | 2010-11-08 | 10d | 0d |  |  |  |
| 88 | 1.6.9 | Highlight matched words in search results | 10d | 2009-10-08 | 2009-10-22 | 87 | 2010-11-09 | 2010-11-22 | 10d | 0d |  |  |  |
| 89 | 1.6.10 | Incorporate UE Review comments till date Part 2 | 30d | 2009-10-22 | 2009-12-03 | 88 | 2010-11-23 | 2011-01-03 | 30d | 0d |  |  |  |
| 90 | 1.6.11 | Partial auto connect | 45d | 2009-12-03 | 2010-02-04 | 89 | 2011-01-04 | 2011-03-07 | 45d | 0d |  |  |  |
| 91 | 1.6.12 | Authentication with other IDP | 15d | 2010-02-04 | 2010-02-25 | 90 | 2011-03-08 | 2011-03-28 | 15d | 0d |  |  |  |
| 92 | 1.6.13 | Smart metadata search (Merge CDEs across versions of same application) | 45d | 2010-02-25 | 2010-04-29 | 91 | 2011-03-29 | 2011-05-30 | 45d | 0d |  |  |  |
| 93 | 1.6.14 | Delete data to existing experiment | 15d | 2010-04-29 | 2010-05-20 | 92 | 2011-05-31 | 2011-06-20 | 15d | 0d |  |  |  |
| 94 | 1.6.15 | Add data to existing experiment | 15d | 2010-05-20 | 2010-06-10 | 93 | 2011-06-21 | 2011-07-11 | 15d | 0d |  |  |  |
| 95 | 1.6.16 | While creating data list, ability to add only selected attributes of records | 35d | 2010-06-10 | 2010-07-29 | 94 | 2011-07-12 | 2011-08-29 | 35d | 0d |  |  |  |

Notes:
- 62: With setting for: Admin, User, Query / Configurin service URL, caB2B clinet URL etc.Ability to configure the applications used for metadata serach
- 64: Get a generic way to invoke AS similar to data services
- 65: Limited by only available services. Also is no instance is configured by admin and user then model for that instance won't searched in metadata. Even though metadata serach is performed on some specific models, user can also view experiments which has data from some other models
- 66: Connecting two datalist based on CDE match, put 2 dropdowns on slide 6 for showing classes OR put attributes + class. / This should be important in joining custom data category. Put a dropdown for Equals and not equals
- 70: Explorer and use Lucene / For entered search string, get synonyms and search for those also. Get synonyms from grid (EVS)
- 71: UE edit slide 78 , refer to caTissue for details
- 73: Asynchronous queres and their results are always saved (System-saved) Later on user can save them expliciltly or can delete it.
- 75: Along with curating, copy curated paths across different application versions
- 82: Slide 61-65
- 83: Instead of participant_1 show Smith Merry
- 87: Ability to define order in which attributes will be displayed in Add limit and result detailed page
- 88: Highlight matched words from description/name, / Highlight matched attributes in add limit page / Select matched Permissible values, / Select matched concept codes / For public id and Cocnept code show Hyper link to caDSR
- 92: Three versions of caTissue should not lead to metadata search showing 3 participant if its CDE is same in each instance, And if shown once query all three instances
- 95: what about the service that expect data fully populated ?

| ID | WBS | Task | Type | Duration | Start | Finish | Predecessors | Baseline start | Baseline finish | Baseline duration | Total slack | Free slack | Text1 |
| --- | --- | --- | --- | --- | --- | --- | --- | --- | --- | --- | --- | --- | --- |
| 96 | 1.7 | **Mile Stone 6** |  | 252d | 2010-07-29 | 2011-07-18 | 79 | 2011-08-30 | 2012-08-15 | 252d | 0d |  | NA |
| 97 | 1.7.1 | Copy/Move experiment |  | 15d | 2010-07-29 | 2010-08-19 |  | 2011-08-30 | 2011-09-19 | 15d | 0d |  |  |
| 98 | 1.7.2 | Upgrade technology stack as per caBIG |  | 45d | 2010-08-19 | 2010-10-21 | 97 | 2011-09-20 | 2011-11-21 | 45d | 0d |  |  |
| 99 | 1.7.3 | Keyboard support for application |  | 45d | 2010-10-21 | 2010-12-23 | 98 | 2011-11-22 | 2012-01-23 | 45d | 0d |  |  |
| 100 | 1.7.4 | Automatic resize of application UI for all resolution |  | 30d | 2010-12-23 | 2011-02-03 | 99 | 2012-01-24 | 2012-03-05 | 30d | 0d |  |  |
| 101 | 1.7.5 | Defining category group |  | 22d | 2011-02-03 | 2011-03-07 | 100 | 2012-03-06 | 2012-04-04 | 22d | 0d |  |  |
| 102 | 1.7.6 | Advance view |  | 35d | 2011-03-07 | 2011-04-25 | 101 | 2012-04-05 | 2012-05-23 | 35d | 0d |  |  |
| 103 | 1.7.7 | Incorporate pending UE comments |  | 60d | 2011-04-25 | 2011-07-18 | 102 | 2012-05-24 | 2012-08-15 | 60d | 0d |  |  |
| 104 | 1.8 | **Documentaion** |  | 100d | 2011-07-18 | 2011-12-05 | 103 | 2012-08-16 | 2013-01-02 | 100d | 0d |  | Apr W1 W2 W3 |
| 105 | 1.8.1 | User manual |  | 35d | 2011-07-18 | 2011-09-05 |  | 2012-08-16 | 2012-10-03 | 35d | 0d |  |  |
| 106 | 1.8.2 | Design document |  | 35d | 2011-09-05 | 2011-10-24 | 105 | 2012-10-04 | 2012-11-21 | 35d | 0d |  |  |
| 107 | 1.8.3 | Lesson learned document |  | 15d | 2011-10-24 | 2011-11-14 | 106 | 2012-11-22 | 2012-12-12 | 15d | 0d |  |  |
| 108 | 1.8.4 | Web site update |  | 15d | 2011-11-14 | 2011-12-05 | 107 | 2012-12-13 | 2013-01-02 | 15d | 0d |  |  |
| 109 | 1.9 | **Release activities** |  | 134d | 2007-08-06 | 2008-02-11 |  | 2007-08-06 | 2008-02-11 | 134d | 997d |  | Apr W4-May |
| 110 | 1.9.1 | internal QA cycle |  | 30d | 2007-08-06 | 2007-09-18 |  | 2007-08-06 | 2007-09-18 | 30d | 997d | 0d |  |
| 111 | 1.9.2 | bug fixing |  | 45d | 2007-09-19 | 2007-11-20 | 110 | 2007-09-19 | 2007-11-20 | 45d | 997d | 0d |  |
| 112 | 1.9.3 | beta release |  | 7d | 2007-11-21 | 2007-11-29 | 111 | 2007-11-21 | 2007-11-29 | 7d | 997d | 0d |  |
| 113 | 1.9.4 | Testing by end users | milestone | 0d | 2007-11-29 | 2007-11-29 | 112 | 2007-11-29 | 2007-11-29 | 0d | 997d | 0d |  |
| 114 | 1.9.5 | bug fixing (beta and end user bugs) |  | 45d | 2007-11-30 | 2008-01-31 | 113 | 2007-11-30 | 2008-01-31 | 45d | 997d | 0d |  |
| 115 | 1.9.6 | final release |  | 7d | 2008-02-01 | 2008-02-11 | 114 | 2008-02-01 | 2008-02-11 | 7d | 997d |  |  |
| 116 | 1.10 | **Performance** |  | 1d? | 2007-08-06 | 2007-08-06 |  | 2007-08-06 | 2007-08-06 | 1d? | 1130d |  | Unable to estimate |
| 117 | 1.10.1 | WS enumeration |  | 1d? | 2007-08-06 | 2007-08-06 |  | 2007-08-06 | 2007-08-06 | 1d? | 1130d |  |  |
| 118 | 1.10.2 | High throughput workgroup |  | 1d? | 2007-08-06 | 2007-08-06 |  | 2007-08-06 | 2007-08-06 | 1d? | 1130d |  |  |
| 119 | 1.10.3 | Explore caGrid FTP |  | 1d? | 2007-08-06 | 2007-08-06 |  | 2007-08-06 | 2007-08-06 | 1d? | 1130d |  |  |
| 120 | 1.10.4 | Develop prototype for compomnets for performance issues |  | 1d? | 2007-08-06 | 2007-08-06 |  | 2007-08-06 | 2007-08-06 | 1d? | 1130d |  |  |

Notes:
- 99: For entire application whereever possible like buttons,tab-ed navigation through search results
- 100: Current implementation is for target resolution 1024x768. If application is used on higher resolutions, component size does not get adjusted automatically. i.e box of size 200 pixel on 1024x768 takes 200 pixels on 1280x960
- 102: advance tab on result screen(4) / Not important as per discussion with Srikanth, Rakesh
